# NewBit (PY-NB-001)

Schedule from MS Project XML, 2026-10-05 to 2026-12-18.

## Calendars

- Estándar: Mon-Fri 08:00-12:00, 13:00-17:00; Sat-Sun off.

## Resources

| Resource |
| --- |
| Equipo Scrum |
| Anthony Lopez |
| Luis Salazar |

## Schedule

| ID | WBS | Task | Duration | Start | Finish | Predecessors | Constraint | Resources |
| --- | --- | --- | --- | --- | --- | --- | --- | --- |
| 1 | 1 | **Inicio del Proyecto** | 10d | 2026-10-05 | 2026-10-16 |  |  |  |
| 2 | 1.1 | Justificación y épicas (EGAP015, FGAP040) | 5d | 2026-10-05 | 2026-10-09 |  | start no earlier than 2026-10-05 | Equipo Scrum |
| 3 | 1.2 | Backlog priorizado, estimación y DoD (MoSCoW, FGAP070) | 5d | 2026-10-12 | 2026-10-16 | 2 |  | Equipo Scrum |
| 4 | 2 | **Sprint 1 · Ingesta y detección (HU01–HU03)** | 10d | 2026-10-19 | 2026-10-30 |  |  |  |
| 5 | 2.1 | Planificación y Estimación del Sprint | 1d | 2026-10-19 | 2026-10-19 | 3 |  | Equipo Scrum |
| 6 | 2.2 | **Implementación del Sprint** | 8d | 2026-10-20 | 2026-10-29 |  |  |  |
| 7 | 2.2.1 | **HU01 · Cargar video (.mp4/.avi) · 1 PH** | 2d | 2026-10-20 | 2026-10-21 |  |  |  |
| 8 | 2.2.1.1 | 1.01 · Pantalla de carga con validación .mp4/.avi | 1d | 2026-10-20 | 2026-10-20 |  | start no earlier than 2026-10-20 | Anthony Lopez |
| 9 | 2.2.1.2 | 1.02 · Extraer metadatos del video (duración, resolución, fps) | 1d | 2026-10-21 | 2026-10-21 | 8 |  | Anthony Lopez |
| 10 | 2.2.2 | **HU02 · Extraer frames · 2 PH** | 4d | 2026-10-20 | 2026-10-23 |  |  |  |
| 11 | 2.2.2.1 | 1.03 · Decodificar con OpenCV y muestrear a 5 fps | 2d | 2026-10-20 | 2026-10-21 |  | start no earlier than 2026-10-20 | Luis Salazar |
| 12 | 2.2.2.2 | 1.04 · Redimensionar y guardar los frames en orden | 1d | 2026-10-22 | 2026-10-22 | 11 |  | Luis Salazar |
| 13 | 2.2.2.3 | 1.05 · Flujo web carga → extracción con estado del proceso | 2d | 2026-10-22 | 2026-10-23 | 9 |  | Anthony Lopez |
| 14 | 2.2.3 | **HU03 · Detectar operarios (YOLOv8) · 4 PH** | 5d | 2026-10-23 | 2026-10-29 |  |  |  |
| 15 | 2.2.3.1 | 1.06 · Integrar YOLOv8n: clase «person» por frame | 2d | 2026-10-23 | 2026-10-26 | 12 |  | Luis Salazar |
| 16 | 2.2.3.2 | 1.07 · Dibujar recuadros y guardar detecciones por frame | 1d | 2026-10-27 | 2026-10-27 | 15, 13 |  | Anthony Lopez |
| 17 | 2.2.3.3 | 1.08 · Pruebas unitarias de frames y detección | 1d | 2026-10-27 | 2026-10-27 | 15 |  | Luis Salazar |
| 18 | 2.2.3.4 | 1.09 · Prueba integrada: carga → frames → detección | 1d | 2026-10-28 | 2026-10-28 | 16, 17 |  | Anthony Lopez |
| 19 | 2.2.3.5 | 1.10 · Revisión de pares y documentación (DoD, FGAP070) | 1d | 2026-10-29 | 2026-10-29 | 18 |  | Luis Salazar; Anthony Lopez |
| 20 | 2.3 | Revisión y Retrospectiva del Sprint | 1d | 2026-10-30 | 2026-10-30 | 19 |  | Equipo Scrum |
| 21 | 3 | **Sprint 2 · Filtrado y clips (HU04, HU05, HU06, HU11)** | 10d | 2026-11-02 | 2026-11-13 |  |  |  |
| 22 | 3.1 | Planificación y Estimación del Sprint | 1d | 2026-11-02 | 2026-11-02 | 20 |  | Equipo Scrum |
| 23 | 3.2 | **Implementación del Sprint** | 9d | 2026-11-02 | 2026-11-12 |  |  |  |
| 24 | 3.2.1 | **HU04 · Descartar frames vacíos · 2 PH** | 1d | 2026-11-09 | 2026-11-09 |  |  |  |
| 25 | 3.2.1.1 | T01 · Evidencia de reducción de frames con videos reales | 1d | 2026-11-09 | 2026-11-09 | 35 | start no earlier than 2026-11-09 | Anthony Lopez |

| ID | WBS | Task | Type | Duration | Start | Finish | Predecessors | Constraint | Resources |
| --- | --- | --- | --- | --- | --- | --- | --- | --- | --- |
| 26 | 3.2.2 | **HU05 · Agrupar en clips · 3 PH** |  | 3d | 2026-11-04 | 2026-11-06 |  |  |  |
| 27 | 3.2.2.1 | T02 · Ventana fija de N frames (N y paso configurables) |  | 2d | 2026-11-04 | 2026-11-05 |  | start no earlier than 2026-11-04 | Luis Salazar |
| 28 | 3.2.2.2 | T03 · Tensor de entrada de ConvLSTM y pruebas |  | 1d | 2026-11-06 | 2026-11-06 | 27 |  | Luis Salazar |
| 29 | 3.2.3 | **HU06 · Descartar clips cortos · 2 PH** |  | 1d | 2026-11-06 | 2026-11-06 |  |  |  |
| 30 | 3.2.3.1 | T04 · Umbral de duración mínima alineado con N |  | 1d | 2026-11-06 | 2026-11-06 | 27 |  | Anthony Lopez |
| 31 | 3.2.4 | **HU11 · Calibrar umbral de confianza · 1 PH** |  | 1d | 2026-11-02 | 2026-11-02 |  |  |  |
| 32 | 3.2.4.1 | T05 · Verificar la calibración con un video real |  | 1d | 2026-11-02 | 2026-11-02 |  | start no earlier than 2026-11-02 | Anthony Lopez |
| 33 | 3.2.5 | **Riesgos R-02 y R-03 (FGAP050)** |  | 9d | 2026-11-02 | 2026-11-12 |  |  |  |
| 34 | 3.2.5.1 | T14 · Entorno de entrenamiento en Colab con checkpoints |  | 1d | 2026-11-02 | 2026-11-02 |  | start no earlier than 2026-11-02 | Luis Salazar |
| 35 | 3.2.5.2 | T11 · Pipeline espacial con 5 videos reales del dataset |  | 1d | 2026-11-03 | 2026-11-03 |  | start no earlier than 2026-11-03 | Luis Salazar |
| 36 | 3.2.5.3 | T12 · Revisión de pares registrada (lista del FGAP070) |  | 2d | 2026-11-10 | 2026-11-11 | 28, 30 | start no earlier than 2026-11-10 | Luis Salazar; Anthony Lopez |
| 37 | 3.2.5.4 | T13 · Prueba E2E con video real y suite completa |  | 1d | 2026-11-12 | 2026-11-12 | 36 |  | Anthony Lopez |
| 38 | 3.3 | Revisión y Retrospectiva del Sprint |  | 1d | 2026-11-13 | 2026-11-13 | 37 |  | Equipo Scrum |
| 39 | 4 | Lanzamiento 1 · Versión alfa: video → clips de operarios | milestone | 0d | 2026-11-13 | 2026-11-13 | 38 |  |  |
| 40 | 5 | **Sprint 3 · Modelo temporal ConvLSTM (HU05, HU07, HU08)** |  | 10d | 2026-11-16 | 2026-11-27 |  |  |  |
| 41 | 5.1 | Planificación y Estimación del Sprint |  | 1d | 2026-11-16 | 2026-11-16 | 39 |  | Equipo Scrum |
| 42 | 5.2 | **Implementación del Sprint** |  | 8d | 2026-11-17 | 2026-11-26 |  |  |  |
| 43 | 5.2.1 | **HU05 · Agrupar en clips (cierre del arrastre) · 3 PH** |  | 3d | 2026-11-17 | 2026-11-19 |  |  |  |
| 44 | 5.2.1.1 | 3.01 · Tensor con la N elegida y pruebas unitarias |  | 1d | 2026-11-17 | 2026-11-17 |  | start no earlier than 2026-11-17 | Luis Salazar |
| 45 | 5.2.1.2 | 3.02 · Revisión de pares y cierre de HU05 con la DoD |  | 1d | 2026-11-19 | 2026-11-19 | 44 | start no earlier than 2026-11-19 | Anthony Lopez |
| 46 | 5.2.2 | **HU07 · Procesar con ConvLSTM · 5 PH** |  | 6d | 2026-11-17 | 2026-11-24 |  |  |  |
| 47 | 5.2.2.1 | 3.03 · Arquitectura ConvLSTM base (config. y semilla fijas) |  | 2d | 2026-11-17 | 2026-11-18 |  | start no earlier than 2026-11-17 | Anthony Lopez |
| 48 | 5.2.2.2 | 3.04 · Tensores del split oficial (entrenamiento y prueba) |  | 1d | 2026-11-18 | 2026-11-18 | 44 |  | Luis Salazar |
| 49 | 5.2.2.3 | 3.05 · Spike: dos valores de N y registro de experimentos |  | 1d | 2026-11-19 | 2026-11-19 | 47, 48 |  | Luis Salazar |
| 50 | 5.2.2.4 | 3.06 · Entrenamiento base en Colab con checkpoint por época |  | 2d | 2026-11-20 | 2026-11-23 | 49 |  | Luis Salazar |
| 51 | 5.2.2.5 | 3.07 · Salida: vector de probabilidades por secuencia |  | 2d | 2026-11-20 | 2026-11-23 | 47 | start no earlier than 2026-11-20 | Anthony Lopez |
| 52 | 5.2.2.6 | 3.08 · Inferencia en el split de prueba y métricas por clase |  | 1d | 2026-11-24 | 2026-11-24 | 50, 51 |  | Luis Salazar |

| ID | WBS | Task | Type | Duration | Start | Finish | Predecessors | Constraint | Resources |
| --- | --- | --- | --- | --- | --- | --- | --- | --- | --- |
| 53 | 5.2.3 | **HU08 · Clasificar y tipificar la conducta · 3 PH** |  | 3d | 2026-11-24 | 2026-11-26 |  |  |  |
| 54 | 5.2.3.1 | 3.09 · Clasificar seguro/inseguro y tipificar la conducta |  | 2d | 2026-11-24 | 2026-11-25 | 51 |  | Anthony Lopez |
| 55 | 5.2.3.2 | 3.10 · Umbral de decisión y matriz de confusión por conducta |  | 1d | 2026-11-25 | 2026-11-25 | 52 |  | Luis Salazar |
| 56 | 5.2.3.3 | 3.11 · Prueba E2E video → clase y revisión de pares |  | 1d | 2026-11-26 | 2026-11-26 | 54, 55 |  | Luis Salazar; Anthony Lopez |
| 57 | 5.3 | Revisión y Retrospectiva del Sprint |  | 1d | 2026-11-27 | 2026-11-27 | 56 |  | Equipo Scrum |
| 58 | 6 | **Sprint 4 · Visualización y alertas (HU09, HU10, HU12)** |  | 10d | 2026-11-30 | 2026-12-11 |  |  |  |
| 59 | 6.1 | Planificación y Estimación del Sprint |  | 1d | 2026-11-30 | 2026-11-30 | 57 |  | Equipo Scrum |
| 60 | 6.2 | **Implementación del Sprint** |  | 8d | 2026-12-01 | 2026-12-10 |  |  |  |
| 61 | 6.2.1 | **HU09 · Ver video con recuadro de riesgo · 4 PH** |  | 4d | 2026-12-01 | 2026-12-04 |  |  |  |
| 62 | 6.2.1.1 | 4.01 · Servicio (API) con clase y confianza por clip |  | 2d | 2026-12-01 | 2026-12-02 |  | start no earlier than 2026-12-01 | Luis Salazar |
| 63 | 6.2.1.2 | 4.02 · Reproductor de video con las detecciones por frame |  | 2d | 2026-12-01 | 2026-12-02 |  | start no earlier than 2026-12-01 | Anthony Lopez |
| 64 | 6.2.1.3 | 4.03 · Recuadro verde/rojo sincronizado con la clase de HU08 |  | 2d | 2026-12-03 | 2026-12-04 | 62, 63 |  | Anthony Lopez |
| 65 | 6.2.2 | **HU10 · Alerta de riesgo con evidencia · 2 PH** |  | 4d | 2026-12-03 | 2026-12-08 |  |  |  |
| 66 | 6.2.2.1 | 4.04 · Regla de alerta: hora, clip y frame de evidencia |  | 2d | 2026-12-03 | 2026-12-04 | 62 |  | Luis Salazar |
| 67 | 6.2.2.2 | 4.05 · Panel de alertas visual y sonoro; confirmar o descartar |  | 2d | 2026-12-07 | 2026-12-08 | 64, 66 |  | Anthony Lopez |
| 68 | 6.2.3 | **HU12 · Ver log de tiempos de procesamiento · 2 PH** |  | 4d | 2026-12-07 | 2026-12-10 |  |  |  |
| 69 | 6.2.3.1 | 4.06 · Registrar tiempos por etapa y % de frames descartados |  | 1d | 2026-12-07 | 2026-12-07 | 66 |  | Luis Salazar |
| 70 | 6.2.3.2 | 4.07 · Vista del log de tiempos y métricas de aceleración |  | 2d | 2026-12-08 | 2026-12-09 | 69 |  | Luis Salazar |
| 71 | 6.2.3.3 | 4.08 · Prueba de usabilidad con el flujo de la operadora |  | 1d | 2026-12-09 | 2026-12-09 | 67 |  | Anthony Lopez |
| 72 | 6.2.3.4 | 4.09 · Prueba E2E con videos del dataset y revisión de pares |  | 1d | 2026-12-10 | 2026-12-10 | 70, 71 |  | Luis Salazar; Anthony Lopez |
| 73 | 6.3 | Revisión y Retrospectiva del Sprint |  | 1d | 2026-12-11 | 2026-12-11 | 72 |  | Equipo Scrum |
| 74 | 7 | **Lanzamiento 2 · Versión final y sustentación** |  | 3d | 2026-12-14 | 2026-12-16 |  |  |  |
| 75 | 7.1 | Despliegue de demostración y manual de usuario |  | 2d | 2026-12-14 | 2026-12-15 | 73 |  | Luis Salazar; Anthony Lopez |
| 76 | 7.2 | Sustentación final ante el docente y el Sponsor |  | 1d | 2026-12-16 | 2026-12-16 | 75 |  | Equipo Scrum |
| 77 | 7.3 | Entrega final del prototipo | milestone | 0d | 2026-12-16 | 2026-12-16 | 76 |  |  |

| ID | WBS | Task | Duration | Start | Finish | Predecessors | Resources |
| --- | --- | --- | --- | --- | --- | --- | --- |
| 78 | 8 | **Cierre del Proyecto** | 2d | 2026-12-17 | 2026-12-18 |  |  |
| 79 | 8.1 | Retrospectiva del proyecto y lecciones aprendidas | 1d | 2026-12-17 | 2026-12-17 | 77 | Equipo Scrum |
| 80 | 8.2 | Acta de cierre y repositorio final | 1d | 2026-12-18 | 2026-12-18 | 79 | Equipo Scrum |
